# Gedung Kantor 3 Lantai — Cikarang

Schedule from MS Project XML, 2026-07-06 to 2026-12-30.

## Calendars

- Standar: Mon-Sat 08:00-12:00, 13:00-17:00; Sun off.

## Schedule

| ID | WBS | Task | Duration | Start | Finish | Predecessors | Complete | Baseline start | Baseline finish | Baseline duration | Cost |
| --- | --- | --- | --- | --- | --- | --- | --- | --- | --- | --- | --- |
| 1 | 1 | **Pekerjaan Persiapan** | 6d | 2026-07-06 | 2026-07-11 |  | 100% | 2026-07-06 | 2026-07-11 | 0d |  |
| 2 | 1.1 | Mobilisasi alat & direksi keet | 6d | 2026-07-06 | 2026-07-11 |  | 100% | 2026-07-06 | 2026-07-11 | 6d | 85,000,000 |
| 3 | 1.2 | Pengukuran & bouwplank | 4d | 2026-07-08 | 2026-07-11 | 2SS+2d | 100% | 2026-07-08 | 2026-07-11 | 4d | 18,000,000 |
| 4 | 1.3 | Pagar sementara proyek | 6d | 2026-07-06 | 2026-07-11 | 2SS | 100% | 2026-07-06 | 2026-07-11 | 6d | 66,000,000 |
| 5 | 2 | **Pekerjaan Tanah & Pondasi** | 36d | 2026-07-13 | 2026-08-22 |  | 100% | 2026-07-13 | 2026-08-22 | 0d |  |
| 6 | 2.1 | Galian tanah pondasi | 12d | 2026-07-13 | 2026-07-25 | 3 | 100% | 2026-07-13 | 2026-07-25 | 12d | 96,000,000 |
| 7 | 2.2 | Pemancangan tiang spun pile Ø40 | 22d | 2026-07-17 | 2026-08-11 | 6SS+4d | 100% | 2026-07-17 | 2026-08-06 | 18d | 1,150,000,000 |
| 8 | 2.3 | Pile cap & tie beam | 16d | 2026-07-27 | 2026-08-13 | 7SS+8d | 100% | 2026-07-27 | 2026-08-13 | 16d | 610,000,000 |
| 9 | 2.4 | Urugan kembali & pemadatan | 8d | 2026-08-14 | 2026-08-22 | 8 | 100% | 2026-08-14 | 2026-08-22 | 8d | 57,000,000 |
| 10 | 3 | **Struktur Atas** | 88d | 2026-08-14 | 2026-11-24 |  | 70% | 2026-08-14 | 2026-11-21 | 0d |  |
| 11 | 3.1 | **Lantai 1** | 24d | 2026-08-14 | 2026-09-10 |  | 100% | 2026-08-14 | 2026-09-10 | 0d |  |
| 12 | 3.1.1 | Kolom Lt.1 | 10d | 2026-08-14 | 2026-08-25 | 8 | 100% | 2026-08-14 | 2026-08-25 | 10d | 190,000,000 |
| 13 | 3.1.2 | Balok & pelat Lt.2 | 14d | 2026-08-26 | 2026-09-10 | 12 | 100% | 2026-08-26 | 2026-09-10 | 14d | 640,000,000 |
| 14 | 3.2 | **Lantai 2** | 24d | 2026-09-22 | 2026-10-19 |  | 99% | 2026-09-19 | 2026-10-16 | 0d |  |
| 15 | 3.2.1 | Kolom Lt.2 | 10d | 2026-09-22 | 2026-10-02 | 13FS+9d | 100% | 2026-09-19 | 2026-09-30 | 10d | 175,000,000 |
| 16 | 3.2.2 | Balok & pelat Lt.3 | 14d | 2026-10-03 | 2026-10-19 | 15 | 99% | 2026-10-01 | 2026-10-16 | 14d | 640,000,000 |
| 17 | 3.3 | **Lantai 3 & Atap** | 24d | 2026-10-28 | 2026-11-24 |  |  | 2026-10-26 | 2026-11-21 | 0d |  |
| 18 | 3.3.1 | Kolom Lt.3 | 10d | 2026-10-28 | 2026-11-07 | 16FS+7d |  | 2026-10-26 | 2026-11-05 | 10d | 160,000,000 |
| 19 | 3.3.2 | Ring balk & rangka atap baja ringan | 12d | 2026-11-09 | 2026-11-21 | 18 |  | 2026-11-06 | 2026-11-19 | 12d | 310,000,000 |
| 20 | 3.3.3 | Penutup atap metal sandwich | 8d | 2026-11-16 | 2026-11-24 | 19SS+6d |  | 2026-11-13 | 2026-11-21 | 8d | 240,000,000 |
| 21 | 4 | **Pekerjaan Arsitektur** | 85d | 2026-09-17 | 2026-12-24 |  | 30% | 2026-09-17 | 2026-12-22 | 0d |  |
| 22 | 4.1 | Pasangan dinding bata ringan | 30d | 2026-09-17 | 2026-10-21 | 13FS+5d | 78% | 2026-09-17 | 2026-10-21 | 30d | 430,000,000 |
| 23 | 4.2 | Plesteran & acian | 30d | 2026-09-29 | 2026-11-02 | 22SS+10d | 58% | 2026-09-29 | 2026-11-02 | 30d | 320,000,000 |
| 24 | 4.3 | Keramik lantai 60×60 | 24d | 2026-10-13 | 2026-11-09 | 23SS+12d | 23% | 2026-10-13 | 2026-11-09 | 24d | 520,000,000 |
| 25 | 4.4 | Kusen, pintu & jendela aluminium | 18d | 2026-10-15 | 2026-11-04 | 23SS+14d | 19% | 2026-10-15 | 2026-11-04 | 18d | 610,000,000 |
| 26 | 4.5 | Plafon gypsum | 18d | 2026-11-25 | 2026-12-15 | 20 |  | 2026-11-23 | 2026-12-12 | 18d | 280,000,000 |
| 27 | 4.6 | Pengecatan interior & eksterior | 20d | 2026-12-02 | 2026-12-24 | 26SS+6d |  | 2026-11-30 | 2026-12-22 | 20d | 350,000,000 |

Notes:
- 2: Volume: 1 ls
- 3: Volume: 180 m
- 4: Volume: 220 m
- 6: Volume: 640 m³
- 7: Volume: 96 titik
- 8: Volume: 210 m³
- 9: Volume: 380 m³
- 12: Volume: 48 m³
- 13: Volume: 820 m²
- 15: Volume: 44 m³
- 16: Volume: 820 m²
- 18: Volume: 40 m³
- 19: Volume: 860 m²
- 20: Volume: 860 m²
- 22: Volume: 2400 m²
- 23: Volume: 4600 m²
- 24: Volume: 2300 m²
- 25: Volume: 186 unit
- 26: Volume: 2200 m²
- 27: Volume: 7800 m²

| ID | WBS | Task | Type | Duration | Start | Finish | Predecessors | Complete | Baseline start | Baseline finish | Baseline duration | Cost |
| --- | --- | --- | --- | --- | --- | --- | --- | --- | --- | --- | --- | --- |
| 28 | 5 | **Pekerjaan MEP** |  | 67d | 2026-10-03 | 2026-12-19 |  | 21% | 2026-10-01 | 2026-12-17 | 0d |  |
| 29 | 5.1 | Instalasi listrik & penerangan |  | 34d | 2026-10-03 | 2026-11-11 | 15 | 34% | 2026-10-01 | 2026-11-09 | 34d | 720,000,000 |
| 30 | 5.2 | Plumbing air bersih & kotor |  | 30d | 2026-10-09 | 2026-11-12 | 15FS+5d | 28% | 2026-10-07 | 2026-11-10 | 30d | 430,000,000 |
| 31 | 5.3 | Instalasi tata udara (AC) |  | 16d | 2026-12-02 | 2026-12-19 | 26SS+6d |  | 2026-11-30 | 2026-12-17 | 16d | 560,000,000 |
| 32 | 6 | **Penyelesaian** |  | 9d | 2026-12-21 | 2026-12-30 |  |  | 2026-12-18 | 2026-12-28 | 0d |  |
| 33 | 6.1 | Testing & commissioning |  | 8d | 2026-12-21 | 2026-12-29 | 29, 30, 31 |  | 2026-12-18 | 2026-12-26 | 8d | 60,000,000 |
| 34 | 6.2 | Pembersihan akhir |  | 5d | 2026-12-25 | 2026-12-30 | 27, 33SS+3d |  | 2026-12-23 | 2026-12-28 | 5d | 36,000,000 |
| 35 | 6.3 | Serah terima pertama (PHO) | milestone | 0d | 2026-12-30 | 2026-12-30 | 33, 34 |  | 2026-12-28 | 2026-12-28 | 0d |  |

Notes:
- 29: Volume: 640 titik
- 30: Volume: 1450 m
- 31: Volume: 42 unit
- 33: Volume: 1 ls
- 34: Volume: 2400 m²
